# ljekarna

Schedule from MS Project, 2014-03-26 to 2014-06-24, costs in kn, A marks actual dates.
Ljekarna

## Calendars

- Standard: Mon-Fri 18:00-21:00; Sat-Sun off. Exceptions (off unless hours are given): 2014-05-01 (1.5.2014.), 2014-06-19 (19.6.2014).

## Resources

| Resource | Rate |
| --- | --- |
| Luka | 50 |
| Filip | 50 |
| Ivana | 50 |
| Tea | 50 |
| Josip | 50 |
| Laptop1 | 10 |
| Laptop2 | 10 |
| Laptop3 | 10 |
| Laptop4 | 10 |
| Laptop5 | 10 |
| Projektor | 10 |

## Schedule

| ID | WBS | Task | Type | Duration | Start | Finish | Predecessors | Complete | Remaining | Total slack | Free slack | Resources | Work | Actual work | Cost | Actual cost |
| --- | --- | --- | --- | --- | --- | --- | --- | --- | --- | --- | --- | --- | --- | --- | --- | --- |
| 1 | 1 | **Ljekarna.NET** |  | 23.31d | 2014-03-26 08:00 A | 2014-06-24 18:30 |  | 25% | 17.45d | 0d |  |  | 477.5h | 140.5h | 24,295 | 7,265 |
| 2 | 1.1 | POČETAK PROJEKTA | milestone | 0d | 2014-03-26 08:00 | 2014-03-26 08:00 |  |  |  | 23.31d |  |  |  |  |  |  |
| 3 | 1.2 | **Planiranje projekta** |  | 1.31d | 2014-03-26 18:00 A | 2014-03-31 19:30 A | 2 | 100% |  |  |  |  | 31.5h | 31.5h | 1,625 | 1,625 |
| 4 | 1.2.1 | Definiranje projektnog tima |  | 2h | 2014-03-26 18:00 A | 2014-03-26 20:00 A | 2 | 100% |  |  |  | Filip; Ivana; Josip; Luka; Tea | 10h | 10h | 500 | 500 |
| 5 | 1.2.2 | **Prvi sastanak** |  | 1.06d | 2014-03-26 20:00 A | 2014-03-31 19:30 A | 4 | 100% |  |  |  |  | 21.5h | 21.5h | 1,125 | 1,125 |
| 6 | 1.2.2.1 | Proučavanje korisničkih zahtjeva |  | 3h | 2014-03-26 20:00 A | 2014-03-27 20:00 A | 4 | 100% |  |  |  | Filip; Josip; Laptop1; Luka | 9h | 9h | 460 | 460 |
| 7 | 1.2.2.2 | **Definiranje projekta** |  | 0.69d | 2014-03-27 20:00 A | 2014-03-31 19:30 A | 6 | 100% |  |  |  |  | 12.5h | 12.5h | 665 | 665 |
| 8 | 1.2.2.2.1 | Opis domene projekta |  | 1h | 2014-03-27 20:00 A | 2014-03-27 21:00 A | 6 | 100% |  |  |  | Filip; Laptop1 | 1h | 1h | 60 | 60 |
| 9 | 1.2.2.2.2 | Dizajniranje arhitekture sustava |  | 3h | 2014-03-28 18:00 A | 2014-03-28 21:00 A | 8 | 100% |  |  |  | Ivana; Josip; Laptop2; Luka | 9h | 9h | 460 | 460 |
| 10 | 1.2.2.2.3 | Specificiranje funkcionalnosti aplikacije |  | 1h | 2014-03-31 18:00 A | 2014-03-31 19:00 A | 9 | 100% |  |  |  | Josip; Laptop3; Luka | 2h | 2h | 110 | 110 |
| 11 | 1.2.2.2.4 | Odabir potrebne tehnologije |  | 30min | 2014-03-31 19:00 A | 2014-03-31 19:30 A | 10 | 100% |  |  |  | Filip; Laptop1 | 0.5h | 0.5h | 35 | 35 |
| 12 | 1.2.3 | ZAVRŠETAK PRVOG SASTANKA | milestone | 0d | 2014-03-31 19:30 A | 2014-03-31 19:30 A | 5 | 100% |  |  |  |  |  |  |  |  |
| 13 | 1.3 | ZAVRŠEKTA PLANIRANJA PROJEKTA | milestone | 0d | 2014-03-31 19:30 A | 2014-03-31 19:30 A | 3 | 100% |  |  |  |  |  |  |  |  |
| 14 | 1.4 | **Modeliranje** |  | 4.88d | 2014-03-31 19:30 A | 2014-04-17 19:30 | 13 | 92% | 0.37d | 0d |  |  | 117h | 109h | 6,090 | 5,640 |
| 15 | 1.4.1 | **Drugi sastanak** |  | 1.75d | 2014-03-31 19:30 A | 2014-04-07 18:30 A | 13 | 100% |  |  |  |  | 24.5h | 24.5h | 1,305 | 1,305 |
| 16 | 1.4.1.1 | Rekapitulacija prvog sastanka |  | 30min | 2014-03-31 19:30 A | 2014-03-31 20:00 A | 13 | 100% |  |  |  | Filip; Ivana; Josip; Luka; Tea | 2.5h | 2.5h | 125 | 125 |
| 17 | 1.4.1.2 | Raspodjela zadataka članovima tima |  | 30min | 2014-03-31 20:00 A | 2014-03-31 20:30 A | 16 | 100% |  |  |  | Laptop4; Luka | 0.5h | 0.5h | 35 | 35 |
| 18 | 1.4.1.3 | Specifikacija korisničkih zahtjeva |  | 3h | 2014-03-31 20:30 A | 2014-04-01 20:30 A | 17 | 100% |  |  |  | Ivana; Laptop5; Tea | 6h | 6h | 310 | 310 |
| 19 | 1.4.1.4 | Analiza poslovne domene |  | 2h | 2014-04-01 20:30 A | 2014-04-02 19:30 A | 18 | 100% |  |  |  | Josip; Laptop3; Tea | 4h | 4h | 210 | 210 |
| 20 | 1.4.1.5 | Izrada gantograma aktivnosti |  | 4h | 2014-04-02 19:30 A | 2014-04-03 20:30 A | 19 | 100% |  |  |  | Josip; Laptop3 | 4h | 4h | 210 | 210 |
| 21 | 1.4.1.6 | Izrada proračuna i budžeta |  | 3h | 2014-04-03 20:30 A | 2014-04-04 20:30 A | 20 | 100% |  |  |  | Ivana; Laptop2; Laptop5; Tea | 6h | 6h | 320 | 320 |
| 22 | 1.4.1.7 | Izrada ponude naručitelju |  | 60min | 2014-04-04 20:30 A | 2014-04-07 18:30 A | 21 | 100% |  |  |  | Ivana; Laptop2; Laptop5; Tea | 1.5h | 1.5h | 95 | 95 |
| 23 | 1.4.2 | ZAVRŠETAK DRUGOG SASTANKA | milestone | 0d | 2014-04-07 18:30 A | 2014-04-07 18:30 A | 15 | 100% |  |  |  |  |  |  |  |  |
| 24 | 1.4.3 | **Modeliranje problemske domene UML dijagramima** |  | 1.75d | 2014-04-07 18:30 A | 2014-04-11 20:30 | 22 | 99% | 0d | 1.38d |  |  | 44.5h | 44.5h | 2,345 | 2,325 |
| 25 | 1.4.3.1 | **Izrada UML dijagrama aktivnosti** |  | 0.38d | 2014-04-07 18:30 A | 2014-04-08 18:30 | 22 | 99% | 0d | 2.75d |  |  | 9.5h | 9.5h | 515 | 495 |
| 26 | 1.4.3.1.1 | Dijagram aktivnosti naručivanja lijekova |  | 1h | 2014-04-07 18:30 A | 2014-04-07 19:30 | 22 | 99% | 0h | 0.25d | 0.12d | Filip; Laptop1; Ivana; Josip; Laptop2; Tea | 1h | 1h | 70 | 60 |
| 27 | 1.4.3.1.2 | Dijagram aktivnosti unosa naručivanja |  | 1h | 2014-04-07 20:30 A | 2014-04-08 18:30 | 26 | 99% | 0h | 2.75d |  | Filip; Laptop1; Ivana; Josip; Laptop2; Tea | 1h | 1h | 70 | 60 |
| 28 | 1.4.3.1.3 | Dijagram aktivnosti stanja i lokacije skladištenja |  | 30min | 2014-04-07 18:30 A | 2014-04-07 19:00 A | 27 | 100% |  |  |  | Ivana; Josip; Laptop2; Tea | 1.5h | 1.5h | 75 | 75 |
| 29 | 1.4.3.1.4 | Dijagram aktivnosti provjere klijenta |  | 30min | 2014-04-07 18:30 A | 2014-04-07 19:00 A | 28 | 100% |  |  |  | Ivana; Josip; Laptop3; Tea | 1.5h | 1.5h | 75 | 75 |
| 30 | 1.4.3.1.5 | Dijagram aktivnosti ispisa računa |  | 30min | 2014-04-07 18:30 A | 2014-04-07 19:00 A | 29 | 100% |  |  |  | Ivana; Josip; Laptop2; Tea | 1.5h | 1.5h | 75 | 75 |
| 31 | 1.4.3.1.6 | Dijagram aktivnosti ažuriranja stanja lijekova |  | 30min | 2014-04-07 18:30 A | 2014-04-07 19:00 A | 30 | 100% |  |  |  | Ivana; Josip; Laptop2; Tea | 1.5h | 1.5h | 75 | 75 |
| 32 | 1.4.3.1.7 | Dijagram aktivnosti obavijesti o minimalnom stanju lijekova |  | 30min | 2014-04-07 18:30 A | 2014-04-07 19:00 A | 31 | 100% |  |  |  | Ivana; Josip; Laptop2; Tea | 1.5h | 1.5h | 75 | 75 |
| 33 | 1.4.3.2 | Izrada UML dijagrama slučajeva korištenja |  | 1h | 2014-04-08 19:30 A | 2014-04-08 20:30 A | 32 | 100% |  |  |  | Filip; Laptop1; Laptop4; Luka | 2h | 2h | 120 | 120 |
| 34 | 1.4.3.3 | Izrada UML dijagram klasa |  | 3h | 2014-04-08 20:30 A | 2014-04-09 20:30 A | 33 | 100% |  |  |  | Laptop4; Luka | 3h | 3h | 160 | 160 |
| 35 | 1.4.3.4 | Izrada projektne dokumentacije za prvu fazu |  | 6h | 2014-04-09 20:30 A | 2014-04-11 20:30 A | 34 | 100% |  |  |  | Filip; Ivana; Josip; Laptop1; Laptop2; Laptop3; Laptop4; Laptop5; Luka; Tea | 30h | 30h | 1,550 | 1,550 |

| ID | WBS | Task | Type | Duration | Start | Finish | Predecessors | Complete | Remaining | Total slack | Resources | Work | Actual work | Cost | Actual cost |
| --- | --- | --- | --- | --- | --- | --- | --- | --- | --- | --- | --- | --- | --- | --- | --- |
| 36 | 1.4.4 | **Modeliranje baze podataka** |  | 1.38d | 2014-04-11 20:30 A | 2014-04-17 19:30 | 35 | 73% | 0.38d | 0d |  | 48h | 40h | 2,440 | 2,010 |
| 37 | 1.4.4.1 | Izrada ERA modela |  | 8h | 2014-04-11 20:30 A | 2014-04-16 19:30 A | 35 | 100% |  |  | Filip; Ivana; Josip; Laptop4; Luka; Tea | 40h | 40h | 2,010 | 2,010 |
| 38 | 1.4.4.2 | PRVA PROVJERA | milestone | 0d | 2014-04-16 19:30 | 2014-04-16 19:30 | 37 |  |  | 0d |  |  |  |  |  |
| 39 | 1.4.4.3 | Generiranje SQL skripte |  | 2h | 2014-04-16 19:30 | 2014-04-17 18:30 | 38 |  |  | 0d | Filip; Ivana; Laptop1; Laptop4; Luka | 6h |  | 320 |  |
| 40 | 1.4.4.4 | Izrada idejnih skica ekrana |  | 1h | 2014-04-17 18:30 | 2014-04-17 19:30 | 39 |  |  | 0d | Josip; Laptop3; Tea | 2h |  | 110 |  |
| 41 | 1.5 | ZAVRŠETAK MODELIRANJA | milestone | 0d | 2014-04-17 19:30 | 2014-04-17 19:30 | 14 |  |  | 0d |  |  |  |  |  |
| 42 | 1.6 | **Realizacija programskog rješenja** |  | 17d | 2014-04-17 19:30 | 2014-06-23 20:30 | 41 |  |  | 0d |  | 324h |  | 16,310 |  |
| 43 | 1.6.1 | **Izrada aplikacije u .NET** |  | 13d | 2014-04-17 19:30 | 2014-06-06 18:30 | 41 |  |  | 0d |  | 244h |  | 12,260 |  |
| 44 | 1.6.1.1 | Izrada modula za pretraživanje lijekova |  | 22h | 2014-04-17 19:30 | 2014-04-28 20:30 | 41 |  |  | 0d | Filip; Ivana; Laptop1 | 44h |  | 2,210 |  |
| 45 | 1.6.1.2 | Izrada modula za prijavu u sustav |  | 18h | 2014-04-28 20:30 | 2014-05-07 20:30 | 44 |  |  | 0d | Luka; Laptop3; Josip | 36h |  | 1,810 |  |
| 46 | 1.6.1.3 | Izrada modula za naručivanje lijekova |  | 18h | 2014-05-07 20:30 | 2014-05-15 20:30 | 45 |  |  | 0d | Filip; Laptop5; Tea | 36h |  | 1,810 |  |
| 47 | 1.6.1.4 | Izrada modula za provjeru klijenta |  | 16h | 2014-05-15 20:30 | 2014-05-23 18:30 | 46 |  |  | 0d | Ivana; Josip; Laptop3 | 32h |  | 1,610 |  |
| 48 | 1.6.1.5 | Izrada modula za analizu poslovanja |  | 18h | 2014-05-23 18:30 | 2014-06-02 18:30 | 47 |  |  | 0d | Laptop5; Luka; Tea | 36h |  | 1,810 |  |
| 49 | 1.6.1.6 | Izrada modula za izdavanje računa |  | 12h | 2014-06-02 18:30 | 2014-06-06 18:30 | 48 |  |  | 0d | Filip; Laptop1; Luka; Ivana; Josip; Tea | 60h |  | 3,010 |  |
| 50 | 1.6.2 | DRUGA PROVJERA |  | 1d | 2014-06-06 18:30 | 2014-06-10 20:30 | 49 |  |  | 0d |  |  |  |  |  |
| 51 | 1.6.3 | Testiranje programskog koda |  | 1d | 2014-06-10 20:30 | 2014-06-13 19:30 | 50 |  |  | 0d | Filip; Ivana; Josip; Laptop1; Laptop2 | 24h |  | 1,220 |  |
| 52 | 1.6.4 | Dorada aplikacije |  | 1d | 2014-06-13 19:30 | 2014-06-18 18:30 | 51 |  |  | 0d | Laptop5; Luka; Tea | 16h |  | 810 |  |
| 53 | 1.6.5 | Izrada projektne dokumentacije za završnu fazu |  | 1d | 2014-06-18 18:30 | 2014-06-23 20:30 | 52 |  |  | 0d | Filip; Ivana; Josip; Laptop2; Laptop4; Luka; Tea | 40h |  | 2,020 |  |
| 54 | 1.7 | REALIZACIJA ZAVRŠENA | milestone | 0d | 2014-06-23 20:30 | 2014-06-23 20:30 | 42 |  |  | 0d |  |  |  |  |  |
| 55 | 1.8 | **Isporuka programskog rješenja** |  | 0.12d | 2014-06-23 20:30 | 2014-06-24 18:30 | 54 |  |  | 0d |  | 5h |  | 270 |  |
| 56 | 1.8.1 | Javna prezentacija i obrana aplikacije |  | 1h | 2014-06-23 20:30 | 2014-06-24 18:30 | 54 |  |  | 0d | Filip; Ivana; Josip; Laptop1; Luka; Projektor; Tea | 5h |  | 270 |  |
| 57 | 2 | PROJEKT ZAVRŠEN | milestone | 0d | 2014-06-24 18:30 | 2014-06-24 18:30 | 56 |  |  | 0d |  |  |  |  |  |
